# Задание1

Schedule from MS Project, 2022-03-01 to 2022-09-19, costs in ₽.
Команда разработчиков из 16 человек занимается созданием карты города на основе собственного модуля отображения. Проект должен быть завершен в течение 6 месяцев. Бюджет проекта: 50 000 рублей.

## Calendars

- Стандартный: Mon-Fri 09:00-13:00, 14:00-18:00; Sat-Sun off. Exceptions (off unless hours are given): 2022-03-05 00:00-08:00, 09:00-17:00 (рабочий), 2022-03-06 to 2022-03-08 (8 марта), 2022-04-30 to 2022-05-03 (1 мая), 2022-05-07 to 2022-05-10 (9 мая), 2022-06-11 to 2022-06-13 (день России).

## Resources

| Resource | Group | Rate | Cost per use |
| --- | --- | --- | --- |
| Ведущий программист | Программирование | 10 | 100 |
| Программист#4 | Программирование | 7 | 50 |
| Программист#3 | Программирование | 7 | 50 |
| Программист#2 | Программирование | 7 | 50 |
| Программист#1 | Программирование | 7 | 50 |
| Системный аналитик | Анализ | 20 | 300 |
| Художник-дизайнер | Дизайн | 8 | 70 |
| Технический писатель | Документация | 5 | 20 |
| Web-дизайнер | Internet | 7 | 50 |
| 3Д аниматор | Дизайн | 8 | 70 |
| Мультимедиакорреспондент | М-медиа | 3 | 20 |
| Наборщик данных#5 | Ввод данных | 2 | 10 |
| Наборщик данных#4 | Ввод данных | 2 | 10 |
| Наборщик данных#3 | Ввод данных | 2 | 10 |
| Наборщик данных#2 | Ввод данных | 2 | 10 |
| Наборщик данных#1 | Ввод данных | 2 | 10 |
| Дополнительный сервер | Оборудование | 2 |  |

## Schedule

| ID | WBS | Task | Type | Duration | Start | Finish | Predecessors | Total slack | Resources | Work | Cost |
| --- | --- | --- | --- | --- | --- | --- | --- | --- | --- | --- | --- |
| 1 | 1 | Начало проекта | milestone, manual | 0w | 2022-03-01 | 2022-03-01 |  |  |  |  |  |
| 2 | 2 | **Создание интерфейса** |  | 120d | 2022-03-01 | 2022-08-22 | 1 | 0d |  | 560h | 5,550 |
| 3 | 2.1 | **Разработка дизайна интерфейса** |  | 25d | 2022-03-01 | 2022-04-04 |  | 0d |  | 320h | 2,770 |
| 4 | 2.1.1 | Разработка 2D графических элементов | manual | 3w | 2022-03-01 | 2022-03-21 |  |  | Художник-дизайнер | 120h | 1,030 |
| 5 | 2.1.2 | Разработка 3D графических элементов | manual | 2w | 2022-03-01 | 2022-03-14 | 4SS |  | 3Д аниматор | 80h | 710 |
| 6 | 2.1.3 | Создание заставки | manual | 3w | 2022-03-15 | 2022-04-04 | 5 |  | 3Д аниматор | 120h | 1,030 |
| 7 | 2.2 | Программирование интерфейса | manual | 3w | 2022-08-02 | 2022-08-22 | 3, 12 |  | Программист#3; Программист#4 | 240h | 1,780 |
| 8 | 3 | **Построение базы объектов** |  | 85d | 2022-03-22 | 2022-07-25 |  | 0d | Дополнительный сервер | 5729h | 15,548 |
| 9 | 3.1 | Анализ и построение структуры базы объектов | manual | 2w | 2022-03-22 | 2022-04-04 |  |  | Системный аналитик | 80h | 1,900 |
| 10 | 3.2 | Программирование средств обработки базы объектов | manual | 3w | 2022-04-05 | 2022-04-25 | 9 |  | Программист#3; Программист#4 | 240h | 1,780 |
| 11 | 3.3 | Наполнение базы объектов | manual | 12w | 2022-04-26 | 2022-07-25 | 10 |  | Наборщик данных#1; Наборщик данных#2; Наборщик данных#3; Наборщик данных#4; Наборщик данных#5 | 2400h | 4,850 |
| 12 | 4 | **Создание ядра GIS** |  | 95d | 2022-03-01 | 2022-07-18 |  | 0d |  | 1880h | 18,680 |
| 13 | 4.1 | Анализ и проектирование ядра | manual | 3w | 2022-03-01 | 2022-03-21 |  |  | Ведущий программист; Системный аналитик | 240h | 4,000 |
| 14 | 4.2 | Создание модели ядра | manual | 5w | 2022-03-22 | 2022-04-25 | 13 |  | Ведущий программист; Программист#1 | 400h | 3,550 |
| 15 | 4.3 | Тестирование модели ядра | manual | 1w | 2022-04-26 | 2022-05-04 | 14 |  | Программист#1 | 40h | 330 |
| 16 | 4.4 | Создание рабочей версии ядра | manual | 10w | 2022-05-05 | 2022-07-18 | 15 |  | Ведущий программист; Программист#1; Программист#2 | 1200h | 9,800 |
| 17 | 5 | Создание мультимедиа – наполнения | manual | 6w | 2022-04-05 | 2022-05-20 | 3 |  | Мультимедиакорреспондент | 240h | 740 |
| 18 | 6 | Создание справочной системы | manual | 2w | 2022-09-01 | 2022-09-14 | 7 |  | Технический писатель | 80h | 420 |
| 19 | 7 | **Создание руководства пользователя** |  | 27d | 2022-07-26 | 2022-08-31 | 7FS-10d |  |  | 160h | 1,010 |
| 20 | 7.1 | Разработка дизайна руководства | manual | 1w | 2022-07-26 | 2022-08-01 |  |  | Художник-дизайнер | 40h | 390 |
| 21 | 7.2 | Написание руководства пользователя | manual | 3w | 2022-07-28 | 2022-08-31 | 20SS+2d |  | Технический писатель | 120h | 620 |
| 22 | 8 | **Создание web – сайта и поддержка** |  | 4.6w | 2022-07-28 | 2022-08-29 |  |  |  | 248h | 2,106 |
| 23 | 8.1 | Разработка структуры сайта | manual | 1d | 2022-07-28 | 2022-07-28 | 21SS |  | Web-дизайнер | 8h | 106 |
| 24 | 8.2 | Разработка дизайна сайта | manual | 1.4w | 2022-07-29 | 2022-08-08 | 23 |  | Web-дизайнер; Художник-дизайнер; 3Д аниматор | 120h | 1,110 |
| 25 | 8.3 | Наполнение сайта | manual | 3w | 2022-08-09 | 2022-08-29 | 24 |  | Web-дизайнер | 120h | 890 |
| 26 | 9 | Тестирование сайта | manual | 4w | 2022-08-23 | 2022-09-19 | 22FS-1w |  | Ведущий программист; Программист#1; Программист#2 | 480h | 4,040 |
| 27 | 10 | Сдача сайта в эксплуатацию | milestone | 0w | 2022-09-19 | 2022-09-19 | 26 | 0d |  |  |  |
