# Задание1

Schedule from MS Project, 2022-03-01 to 2022-08-16, status date 2022-05-06, costs in ₽, A marks actual dates.
Команда разработчиков из 16 человек занимается созданием карты города на основе собственного модуля отображения. Проект должен быть завершен в течение 6 месяцев. Бюджет проекта: 50 000 рублей.

## Calendars

- Стандартный: Mon-Fri 09:00-13:00, 14:00-18:00; Sat-Sun off. Exceptions (off unless hours are given): 2022-03-05 00:00-08:00, 09:00-17:00 (рабочий), 2022-03-06 to 2022-03-08 (8 марта), 2022-04-30 to 2022-05-03 (1 мая), 2022-05-07 to 2022-05-10 (9 мая), 2022-06-11 to 2022-06-13 (день России).

## Resources

| Resource | Group | Rate | Cost per use |
| --- | --- | --- | --- |
| Ведущий программист | Программирование | 10 | 100 |
| Программист#4 | Программирование | 7 | 50 |
| Программист#3 | Программирование | 7 | 50 |
| Программист#2 | Программирование | 7 | 50 |
| Программист#1 | Программирование | 7 | 50 |
| Системный аналитик | Анализ | 20 | 300 |
| Художник-дизайнер | Дизайн | 8 | 70 |
| Технический писатель | Документация | 5 | 20 |
| Web-дизайнер | Internet | 7 | 50 |
| 3Д аниматор | Дизайн | 8 | 70 |
| Мультимедиакорреспондент | М-медиа | 3 | 20 |
| Наборщик данных#5 | Ввод данных | 2 | 10 |
| Наборщик данных#4 | Ввод данных | 2 | 10 |
| Наборщик данных#3 | Ввод данных | 2 | 10 |
| Наборщик данных#2 | Ввод данных | 2 | 10 |
| Наборщик данных#1 | Ввод данных | 2 | 10 |
| Дополнительный сервер | Оборудование | 2 |  |

## Schedule

| ID | WBS | Task | Type | Duration | Start | Finish | Predecessors | Complete | Remaining | Baseline start | Baseline finish | Baseline duration | Total slack | Free slack | Resources | Work | Actual work | Cost | Baseline cost | Actual cost |
| --- | --- | --- | --- | --- | --- | --- | --- | --- | --- | --- | --- | --- | --- | --- | --- | --- | --- | --- | --- | --- |
| 1 | 1 | **Создание интерфейса** |  | 93.19d | 2022-03-01 09:00 A | 2022-07-15 10:31 |  | 35% | 60.28d | 2022-03-01 09:00 | 2022-06-27 11:59 | 79.37d | 0d | 2.32d |  | 560h | 80h | 6,164 | 5,650 | 1,074 |
| 2 | 1.1 | **Разработка дизайна интерфейса** |  | 72.75d | 2022-03-01 09:00 A | 2022-06-16 16:00 |  | 38% | 44.95d | 2022-03-01 09:00 | 2022-04-05 15:00 | 25.62d | 12.49d | 0d |  | 320h | 80h | 3,284 | 2,770 | 724 |
| 3 | 1.1.1 | Разработка 2D графических элементов |  | 3.75w | 2022-03-01 09:00 | 2022-03-28 11:00 |  |  |  | 2022-03-01 09:00 | 2022-03-22 12:00 | 3w | 65.99d | 54d | Художник-дизайнер [80%] | 120h |  | 1,016 | 1,030 |  |
| 4 | 1.1.2 | Разработка 3D графических элементов |  | 6.97w | 2022-03-01 09:00 A | 2022-04-18 18:00 A | 3SS | 100% |  | 2022-03-01 09:00 | 2022-03-15 11:00 | 2w |  |  | 3Д аниматор; Художник-дизайнер [20%] | 80h | 80h | 724 | 710 | 724 |
| 5 | 1.1.3 | Создание заставки |  | 7.53w | 2022-04-19 09:00 | 2022-06-16 16:00 | 4 |  |  | 2022-03-15 11:00 | 2022-04-05 15:00 | 3w | 12.49d | 0d | 3Д аниматор; Художник-дизайнер [20%] | 120h |  | 1,544 | 1,030 |  |
| 6 | 1.2 | Программирование интерфейса |  | 1.5w | 2022-07-05 15:31 | 2022-07-15 10:31 | 2, 11 |  |  | 2022-06-15 16:59 | 2022-06-27 11:59 | 1.5w | 0d |  | Программист#3; Программист#4; Программист#1; Программист#2 | 240h |  | 1,880 | 1,880 |  |
| 7 | 2 | **Построение базы объектов** |  | 110.67d | 2022-03-01 09:00 | 2022-08-09 15:22 |  |  |  | 2022-03-22 12:00 | 2022-07-29 10:47 | 87.85d | 5.32d |  | Дополнительный сервер | 6590.38h |  | 17,370.75 | 15,819.58 |  |
| 8 | 2.1 | Анализ и построение структуры базы объектов |  | 20d | 2022-03-01 09:00 | 2022-03-28 18:00 |  |  |  | 2022-03-22 12:00 | 2022-04-05 15:00 | 2w | 5.32d | 0d | Системный аналитик | 80h |  | 1,900 | 1,900 |  |
| 9 | 2.2 | Программирование средств обработки базы объектов |  | 3.54w | 2022-03-29 09:00 | 2022-05-16 15:22 | 8 |  |  | 2022-04-05 15:00 | 2022-04-29 10:47 | 2.92w | 5.32d | 0d | Программист#3; Программист#4; Программист#1; Программист#2 | 240h |  | 1,880 | 1,880 |  |
| 10 | 2.3 | Наполнение базы объектов |  | 12w | 2022-05-16 15:22 | 2022-08-09 15:22 | 9 |  |  | 2022-04-29 10:47 | 2022-07-29 10:47 | 12w | 5.32d |  | Наборщик данных#1; Наборщик данных#2; Наборщик данных#3; Наборщик данных#4; Наборщик данных#5 | 2400h |  | 4,850 | 4,850 |  |
| 11 | 3 | **Создание ядра GIS** |  | 85.69d | 2022-03-01 09:00 | 2022-07-05 15:31 |  |  |  | 2022-03-01 09:00 | 2022-06-15 16:59 | 71.87d | 0d | 7.56d |  | 1880h |  | 18,128.62 | 18,128.62 |  |
| 12 | 3.1 | Анализ и проектирование ядра |  | 6w | 2022-03-01 09:00 | 2022-04-19 12:00 |  |  |  | 2022-03-01 09:00 | 2022-03-22 12:00 | 3w | 0d |  | Ведущий программист; Системный аналитик | 240h |  | 4,000 | 4,000 |  |
| 13 | 3.2 | Создание модели ядра |  | 2.05w | 2022-04-19 12:00 | 2022-05-05 14:49 | 12 |  |  | 2022-03-22 12:00 | 2022-04-05 12:49 | 2.02w | 0d |  | Ведущий программист; Программист#1; Программист#2; Программист#3; Программист#4 | 400h |  | 3,336.46 | 3,336.46 |  |
| 14 | 3.3 | Тестирование модели ядра |  | 0.96w | 2022-05-05 14:49 | 2022-05-23 10:36 | 13 |  |  | 2022-04-05 12:49 | 2022-04-19 09:36 | 1w | 0d |  | Программист#1; Программист#2 | 40h |  | 380 | 380 |  |
| 15 | 3.4 | Создание рабочей версии ядра |  | 6.1w | 2022-05-23 10:36 | 2022-07-05 15:31 | 14 |  |  | 2022-04-19 09:36 | 2022-06-15 16:59 | 7.36w | 0d | 9.89d | Ведущий программист; Программист#1; Программист#2; Программист#3; Программист#4 | 1200h |  | 9,412.16 | 9,412.16 |  |
| 16 | 4 | Создание мультимедиа – наполнения |  | 6w | 2022-06-16 16:00 | 2022-07-29 13:00 | 2 |  |  | 2022-04-05 15:00 | 2022-05-24 13:00 | 6w | 12.49d | 0d | Мультимедиакорреспондент | 240h |  | 740 | 740 |  |
| 17 | 5 | Создание справочной системы |  | 2w | 2022-07-26 14:31 | 2022-08-09 15:31 | 6 |  |  | 2022-07-06 15:59 | 2022-07-20 17:59 | 2w | 5.3d | 12.5d | Технический писатель | 80h |  | 420 | 420 |  |
| 18 | 6 | **Создание руководства пользователя** |  | 17.38d | 2022-07-01 10:31 | 2022-07-26 14:31 | 6FS-10d |  |  | 2022-06-10 11:59 | 2022-07-06 15:59 | 17.38d | 0d | 2.32d |  | 160h |  | 1,010 | 1,010 |  |
| 19 | 6.1 | Разработка дизайна руководства |  | 1w | 2022-07-01 10:31 | 2022-07-08 11:31 |  |  |  | 2022-06-10 11:59 | 2022-06-20 12:59 | 1w | 0d |  | Художник-дизайнер | 40h |  | 390 | 390 |  |
| 20 | 6.2 | Написание руководства пользователя |  | 3w | 2022-07-05 10:31 | 2022-07-26 14:31 | 19SS+2d |  |  | 2022-06-15 11:59 | 2022-07-06 15:59 | 3w | 0d |  | Технический писатель | 120h |  | 620 | 620 |  |
| 21 | 7 | **Создание web – сайта и поддержка** |  | 23.62d | 2022-07-05 10:31 | 2022-08-05 16:31 |  |  |  | 2022-06-15 11:59 | 2022-07-18 17:59 | 23.62d | 0d |  |  | 248h |  | 2,106 | 2,106 |  |
| 22 | 7.1 | Разработка структуры сайта |  | 1d | 2022-07-05 10:31 | 2022-07-06 11:31 | 20SS |  |  | 2022-06-15 11:59 | 2022-06-16 11:59 | 1d | 0d |  | Web-дизайнер | 8h |  | 106 | 106 |  |
| 23 | 7.2 | Разработка дизайна сайта |  | 1.45w | 2022-07-06 11:31 | 2022-07-15 14:31 | 22 |  |  | 2022-06-16 11:59 | 2022-06-27 14:59 | 1.43w | 0d |  | Web-дизайнер; Художник-дизайнер; 3Д аниматор | 120h |  | 1,110 | 1,110 |  |
| 24 | 7.3 | Наполнение сайта |  | 3w | 2022-07-15 14:31 | 2022-08-05 16:31 | 23 |  |  | 2022-06-27 14:59 | 2022-07-18 17:59 | 3w | 0d | 2.32d | Web-дизайнер | 120h |  | 890 | 890 |  |
| 25 | 8 | Тестирование сайта |  | 2.44w | 2022-07-29 16:31 | 2022-08-16 17:56 | 21FS-1w |  |  | 2022-07-11 17:59 | 2022-07-28 11:02 | 2.45w | 0d |  | Ведущий программист; Программист#1; Программист#2; Программист#3; Программист#4 | 480h |  | 3,945.15 | 3,945.15 |  |
| 26 | 9 | Сдача сайта в эксплуатацию | milestone | 0w | 2022-08-16 17:56 | 2022-08-16 17:56 | 25 |  |  | 2022-07-28 11:02 | 2022-07-28 11:02 | 0w | 0d | 2.32d |  |  |  |  |  |  |

| ID | WBS | Task | Type | Duration | Start | Finish | Baseline start | Baseline finish | Baseline duration | Total slack | Constraint | Resources | Work | Cost | Baseline cost |
| --- | --- | --- | --- | --- | --- | --- | --- | --- | --- | --- | --- | --- | --- | --- | --- |
| 30 | 10 | **Совещание** |  | 100.12d | 2022-03-02 09:00 | 2022-07-27 10:00 | 2022-03-02 09:00 | 2022-07-27 10:00 | 100.12d | 0d |  |  | 152h | 1,326 | 1,342 |
| 31 | 10.1 | Совещание 1 | manual | 1h | 2022-03-02 09:00 | 2022-03-02 10:00 | 2022-03-02 09:00 | 2022-03-02 10:00 | 1h |  | start no earlier than 2022-03-02 09:00 | 3Д аниматор; Web-дизайнер; Ведущий программист; Мультимедиакорреспондент; Системный аналитик; Технический писатель; Художник-дизайнер | 7h | 61 | 61 |
| 32 | 10.2 | Совещание 2 | manual | 1h | 2022-03-09 09:00 | 2022-03-09 10:00 | 2022-03-09 09:00 | 2022-03-09 10:00 | 1h |  | start no earlier than 2022-03-09 09:00 | 3Д аниматор; Web-дизайнер; Ведущий программист; Мультимедиакорреспондент; Системный аналитик; Технический писатель; Художник-дизайнер | 7h | 61 | 61 |
| 33 | 10.3 | Совещание 3 | manual | 1h | 2022-03-16 09:00 | 2022-03-16 10:00 | 2022-03-16 09:00 | 2022-03-16 10:00 | 1h |  | start no earlier than 2022-03-16 09:00 | Web-дизайнер; Ведущий программист; Мультимедиакорреспондент; Системный аналитик; Технический писатель; Художник-дизайнер | 6h | 53 | 61 |
| 34 | 10.4 | Совещание 4 | manual | 1h | 2022-03-23 09:00 | 2022-03-23 10:00 | 2022-03-23 09:00 | 2022-03-23 10:00 | 1h |  | start no earlier than 2022-03-23 09:00 | Web-дизайнер; Ведущий программист; Мультимедиакорреспондент; Системный аналитик; Технический писатель; Художник-дизайнер | 6h | 53 | 61 |
| 35 | 10.5 | Совещание 5 | manual | 1h | 2022-03-30 09:00 | 2022-03-30 10:00 | 2022-03-30 09:00 | 2022-03-30 10:00 | 1h |  | start no earlier than 2022-03-30 09:00 | 3Д аниматор; Web-дизайнер; Ведущий программист; Мультимедиакорреспондент; Системный аналитик; Технический писатель; Художник-дизайнер | 7h | 61 | 61 |
| 36 | 10.6 | Совещание 6 | manual | 1h | 2022-04-06 09:00 | 2022-04-06 10:00 | 2022-04-06 09:00 | 2022-04-06 10:00 | 1h |  | start no earlier than 2022-04-06 09:00 | 3Д аниматор; Web-дизайнер; Ведущий программист; Мультимедиакорреспондент; Системный аналитик; Технический писатель; Художник-дизайнер | 7h | 61 | 61 |
| 37 | 10.7 | Совещание 7 | manual | 1h | 2022-04-13 09:00 | 2022-04-13 10:00 | 2022-04-13 09:00 | 2022-04-13 10:00 | 1h |  | start no earlier than 2022-04-13 09:00 | 3Д аниматор; Web-дизайнер; Ведущий программист; Мультимедиакорреспондент; Системный аналитик; Технический писатель; Художник-дизайнер | 7h | 61 | 61 |
| 38 | 10.8 | Совещание 8 | manual | 1h | 2022-04-20 09:00 | 2022-04-20 10:00 | 2022-04-20 09:00 | 2022-04-20 10:00 | 1h |  | start no earlier than 2022-04-20 09:00 | 3Д аниматор; Web-дизайнер; Ведущий программист; Мультимедиакорреспондент; Системный аналитик; Технический писатель; Художник-дизайнер | 7h | 61 | 61 |
| 39 | 10.9 | Совещание 9 | manual | 1h | 2022-04-27 09:00 | 2022-04-27 10:00 | 2022-04-27 09:00 | 2022-04-27 10:00 | 1h |  | start no earlier than 2022-04-27 09:00 | 3Д аниматор; Web-дизайнер; Ведущий программист; Мультимедиакорреспондент; Системный аналитик; Технический писатель; Художник-дизайнер | 7h | 61 | 61 |
| 40 | 10.10 | Совещание 10 | manual | 1h | 2022-05-04 09:00 | 2022-05-04 10:00 | 2022-05-04 09:00 | 2022-05-04 10:00 | 1h |  | start no earlier than 2022-05-04 09:00 | 3Д аниматор; Web-дизайнер; Ведущий программист; Мультимедиакорреспондент; Системный аналитик; Технический писатель; Художник-дизайнер | 7h | 61 | 61 |
| 41 | 10.11 | Совещание 11 | manual | 1h | 2022-05-11 09:00 | 2022-05-11 10:00 | 2022-05-11 09:00 | 2022-05-11 10:00 | 1h |  | start no earlier than 2022-05-11 09:00 | 3Д аниматор; Web-дизайнер; Ведущий программист; Мультимедиакорреспондент; Системный аналитик; Технический писатель; Художник-дизайнер | 7h | 61 | 61 |
| 42 | 10.12 | Совещание 12 | manual | 1h | 2022-05-18 09:00 | 2022-05-18 10:00 | 2022-05-18 09:00 | 2022-05-18 10:00 | 1h |  | start no earlier than 2022-05-18 09:00 | 3Д аниматор; Web-дизайнер; Ведущий программист; Мультимедиакорреспондент; Системный аналитик; Технический писатель; Художник-дизайнер | 7h | 61 | 61 |
| 43 | 10.13 | Совещание 13 | manual | 1h | 2022-05-25 09:00 | 2022-05-25 10:00 | 2022-05-25 09:00 | 2022-05-25 10:00 | 1h |  | start no earlier than 2022-05-25 09:00 | 3Д аниматор; Web-дизайнер; Ведущий программист; Мультимедиакорреспондент; Системный аналитик; Технический писатель; Художник-дизайнер | 7h | 61 | 61 |
| 44 | 10.14 | Совещание 14 | manual | 1h | 2022-06-01 09:00 | 2022-06-01 10:00 | 2022-06-01 09:00 | 2022-06-01 10:00 | 1h |  | start no earlier than 2022-06-01 09:00 | 3Д аниматор; Web-дизайнер; Ведущий программист; Мультимедиакорреспондент; Системный аналитик; Технический писатель; Художник-дизайнер | 7h | 61 | 61 |
| 45 | 10.15 | Совещание 15 | manual | 1h | 2022-06-08 09:00 | 2022-06-08 10:00 | 2022-06-08 09:00 | 2022-06-08 10:00 | 1h |  | start no earlier than 2022-06-08 09:00 | 3Д аниматор; Web-дизайнер; Ведущий программист; Мультимедиакорреспондент; Системный аналитик; Технический писатель; Художник-дизайнер | 7h | 61 | 61 |
| 46 | 10.16 | Совещание 16 | manual | 1h | 2022-06-15 09:00 | 2022-06-15 10:00 | 2022-06-15 09:00 | 2022-06-15 10:00 | 1h |  | start no earlier than 2022-06-15 09:00 | 3Д аниматор; Web-дизайнер; Ведущий программист; Мультимедиакорреспондент; Системный аналитик; Технический писатель; Художник-дизайнер | 7h | 61 | 61 |
| 47 | 10.17 | Совещание 17 | manual | 1h | 2022-06-22 09:00 | 2022-06-22 10:00 | 2022-06-22 09:00 | 2022-06-22 10:00 | 1h |  | start no earlier than 2022-06-22 09:00 | 3Д аниматор; Web-дизайнер; Ведущий программист; Мультимедиакорреспондент; Системный аналитик; Технический писатель; Художник-дизайнер | 7h | 61 | 61 |
| 48 | 10.18 | Совещание 18 | manual | 1h | 2022-06-29 09:00 | 2022-06-29 10:00 | 2022-06-29 09:00 | 2022-06-29 10:00 | 1h |  | start no earlier than 2022-06-29 09:00 | 3Д аниматор; Web-дизайнер; Ведущий программист; Мультимедиакорреспондент; Системный аналитик; Технический писатель; Художник-дизайнер | 7h | 61 | 61 |
| 49 | 10.19 | Совещание 19 | manual | 1h | 2022-07-06 09:00 | 2022-07-06 10:00 | 2022-07-06 09:00 | 2022-07-06 10:00 | 1h |  | start no earlier than 2022-07-06 09:00 | 3Д аниматор; Web-дизайнер; Ведущий программист; Мультимедиакорреспондент; Системный аналитик; Технический писатель; Художник-дизайнер | 7h | 61 | 61 |
| 50 | 10.20 | Совещание 20 | manual | 1h | 2022-07-13 09:00 | 2022-07-13 10:00 | 2022-07-13 09:00 | 2022-07-13 10:00 | 1h |  | start no earlier than 2022-07-13 09:00 | 3Д аниматор; Web-дизайнер; Ведущий программист; Мультимедиакорреспондент; Системный аналитик; Технический писатель; Художник-дизайнер | 7h | 61 | 61 |
| 51 | 10.21 | Совещание 21 | manual | 1h | 2022-07-20 09:00 | 2022-07-20 10:00 | 2022-07-20 09:00 | 2022-07-20 10:00 | 1h |  | start no earlier than 2022-07-20 09:00 | 3Д аниматор; Web-дизайнер; Ведущий программист; Мультимедиакорреспондент; Системный аналитик; Технический писатель; Художник-дизайнер | 7h | 61 | 61 |
| 52 | 10.22 | Совещание 22 | manual | 1h | 2022-07-27 09:00 | 2022-07-27 10:00 | 2022-07-27 09:00 | 2022-07-27 10:00 | 1h |  | start no earlier than 2022-07-27 09:00 | 3Д аниматор; Web-дизайнер; Ведущий программист; Мультимедиакорреспондент; Системный аналитик; Технический писатель; Художник-дизайнер | 7h | 61 | 61 |
